# БилетON

Schedule from MS Project XML, 2026-10-19 to 2026-12-11.
ЛР: WBS и диаграмма Ганта

## Calendars

- Стандартный (с праздником 04.11): Mon-Fri 08:00-12:00, 13:00-17:00; Sat-Sun off. Exceptions (off unless hours are given): 2026-11-04.

## Resources

| Resource | Group |
| --- | --- |
| PM / Backend | Команда БилетON |
| Lead Dev | Команда БилетON |
| Frontend | Команда БилетON |
| QA | Команда БилетON |
| Аналитик | Команда БилетON |

## Schedule

| ID | WBS | Task | Type | Duration | Start | Finish | Predecessors | Constraint | Deadline | Resources |
| --- | --- | --- | --- | --- | --- | --- | --- | --- | --- | --- |
| 1 | 1.0 | **Управление проектом и документация (командный менеджмент)** |  | 39d | 2026-10-19 08:00 | 2026-12-11 17:00 |  |  |  |  |
| 2 | 1.1 | Разработка Устава проекта, согласование со стейкхолдерами |  | 8h | 2026-10-19 08:00 | 2026-10-19 17:00 |  |  |  | PM / Backend |
| 3 | 1.2 | Декомпозиция WBS, построение диаграммы Ганта |  | 4h | 2026-10-20 08:00 | 2026-10-20 12:00 | 2 |  |  | PM / Backend; Lead Dev; Frontend; QA; Аналитик |
| 4 | 1.3 | Модерация Scrum-событий (планирование спринтов, дейли, ретро) |  | 312h | 2026-10-19 08:00 | 2026-12-11 17:00 |  |  |  | PM / Backend [5.13%] |
| 5 | 1.4 | Участие в ежедневных летучках и обновление статусов в Trello/Jira |  | 312h | 2026-10-19 08:00 | 2026-12-11 17:00 |  |  |  | PM / Backend [5.13%]; Lead Dev [5.13%]; Frontend [5.13%]; QA [5.13%]; Аналитик [5.13%] |
| 6 | 1.5 | Ведение реестра рисков и расчёт метрик EVM |  | 312h | 2026-10-19 08:00 | 2026-12-11 17:00 |  |  |  | PM / Backend [2.56%] |
| 7 | 1.6 | Финальная ретроспектива (Start-Stop-Continue) |  | 2h | 2026-12-09 11:00 | 2026-12-09 14:00 |  | start no earlier than 2026-12-09 11:00 |  | PM / Backend; Lead Dev; Frontend; QA; Аналитик |
| 8 | 1.7 | Внедрение и сопровождение User Manual |  | 4h | 2026-12-04 16:00 | 2026-12-07 11:00 |  | start no earlier than 2026-12-04 16:00 |  | PM / Backend |
| 9 | 1.8 | Сборка портфолио и подготовка презентации к защите |  | 8h | 2026-12-07 16:00 | 2026-12-08 16:00 |  | start no earlier than 2026-12-07 16:00 |  | PM / Backend |
| 10 | 1.9 | Подготовка к защите, сдача проекта |  | 4h | 2026-12-09 14:00 | 2026-12-10 09:00 | 7, 8, 9 |  |  | PM / Backend; Lead Dev; Frontend; QA; Аналитик |
| 11 | 1.10 | Защита проекта | milestone | 0h | 2026-12-10 09:00 | 2026-12-10 09:00 | 10 |  | 2026-12-13 17:00 |  |
| 12 | 1.11 | Проект завершён (дедлайн 13.12) | milestone | 0h | 2026-12-11 17:00 | 2026-12-11 17:00 | 11, 4, 5, 6 |  |  |  |
| 13 | 2.0 | **Организация инфраструктуры разработки (DevOps)** |  | 35.38d | 2026-10-20 08:00 | 2026-12-09 11:00 |  |  |  |  |
| 14 | 2.1 | Инициализация Git-репозитория, настройка Git-flow (main, dev, feature) |  | 4h | 2026-10-20 08:00 | 2026-10-20 12:00 |  | start no earlier than 2026-10-20 08:00 |  | PM / Backend |
| 15 | 2.2 | Разработка инструкции по локальному запуску проекта (README) |  | 4h | 2026-10-20 13:00 | 2026-10-20 17:00 | 14 |  |  | Lead Dev |
| 16 | 2.3 | Настройка пайплайна CI (GitHub Actions: линтеры/тесты) |  | 6h | 2026-10-21 08:00 | 2026-10-21 15:00 | 14, 15 |  |  | PM / Backend |
| 17 | 2.4 | Развёртывание локальной СУБД PostgreSQL для тестов |  | 4h | 2026-10-20 13:00 | 2026-10-20 17:00 | 14 |  |  | QA |
| 18 | 2.5 | Настройка скриптов деплоя на тестовый сервер (VPS) |  | 6h | 2026-10-21 15:00 | 2026-10-22 12:00 | 16 |  |  | Lead Dev |
| 19 | 2.6 | Деплой финальной версии на сервер |  | 4h | 2026-12-08 16:00 | 2026-12-09 11:00 | 63 |  |  | Lead Dev |
| 20 | 3.0 | **Модуль «Авторизация и профиль» (Спринт 1)** |  | 3.75d | 2026-10-20 13:00 | 2026-10-26 10:00 |  |  |  |  |
| 21 | 3.1 | Написание Use Cases и критериев DoD для входа/регистрации |  | 4h | 2026-10-20 13:00 | 2026-10-20 17:00 |  | start no earlier than 2026-10-20 13:00 |  | Аналитик; QA |
| 22 | 3.2 | Проектирование и создание таблицы users |  | 4h | 2026-10-21 08:00 | 2026-10-21 12:00 | 21 |  |  | PM / Backend |
| 23 | 3.3 | Реализация JWT-авторизации и разграничения ролей |  | 12h | 2026-10-21 13:00 | 2026-10-22 17:00 | 22 |  |  | Lead Dev |
| 24 | 3.4 | Вёрстка страниц входа и регистрации по макету |  | 8h | 2026-10-21 08:00 | 2026-10-21 17:00 | 21 |  |  | Frontend |
| 25 | 3.5 | Интеграция форм с API авторизации (сохранение токена) |  | 6h | 2026-10-23 08:00 | 2026-10-23 15:00 | 23, 24 |  |  | Frontend |
| 26 | 3.6 | Написание чек-листа тестирования безопасности |  | 2h | 2026-10-21 08:00 | 2026-10-21 10:00 | 21 |  |  | Аналитик; QA |
| 27 | 3.7 | Прогон тестов, заведение багов в Jira |  | 4h | 2026-10-23 15:00 | 2026-10-26 10:00 | 25, 26 |  |  | Frontend; QA |
| 28 | 3.8 | Спринт 1 принят | milestone | 0h | 2026-10-26 10:00 | 2026-10-26 10:00 | 27 |  |  |  |

Notes:
- 2: Роль: [PM]. Плановая длительность по WBS: 8 ч.
- 3: Роль: [Вся команда]. Плановая длительность по WBS: 4 ч.
- 4: Роль: [PM]. Плановая длительность по WBS: 16 ч. Выполняется равномерно в течение всего проекта.
- 5: Роль: [Вся команда]. Плановая длительность по WBS: 16 ч. Выполняется равномерно в течение всего проекта.
- 6: Роль: [PM]. Плановая длительность по WBS: 8 ч. Выполняется равномерно в течение всего проекта.
- 7: Роль: [Вся команда]. Плановая длительность по WBS: 2 ч.
- 8: Роль: [PM]. Плановая длительность по WBS: 4 ч.
- 9: Роль: [PM]. Плановая длительность по WBS: 8 ч.
- 10: Роль: [Вся команда]. Плановая длительность по WBS: 4 ч.
- 14: Роль: [PM / Backend]. Плановая длительность по WBS: 4 ч.
- 15: Роль: [Lead Dev]. Плановая длительность по WBS: 4 ч.
- 16: Роль: [PM / Backend]. Плановая длительность по WBS: 6 ч.
- 17: Роль: [QA]. Плановая длительность по WBS: 4 ч.
- 18: Роль: [Lead Dev]. Плановая длительность по WBS: 6 ч.
- 19: Роль: [Lead Dev]. Плановая длительность по WBS: 4 ч.
- 21: Роль: [Аналитик / QA]. Плановая длительность по WBS: 4 ч.
- 22: Роль: [PM / Backend]. Плановая длительность по WBS: 4 ч.
- 23: Роль: [Lead Dev]. Плановая длительность по WBS: 12 ч.
- 24: Роль: [Frontend]. Плановая длительность по WBS: 8 ч.
- 25: Роль: [Frontend]. Плановая длительность по WBS: 6 ч.
- 26: Роль: [Аналитик / QA]. Плановая длительность по WBS: 2 ч.
- 27: Роль: [Frontend / QA]. Плановая длительность по WBS: 4 ч.

| ID | WBS | Task | Type | Duration | Start | Finish | Predecessors | Resources |
| --- | --- | --- | --- | --- | --- | --- | --- | --- |
| 29 | 4.0 | **Модуль «Афиша и сеансы» (Спринт 2)** |  | 3.5d | 2026-11-02 08:00 | 2026-11-06 12:00 |  |  |
| 30 | 4.1 | Формирование User Stories на просмотр афиши и расписания |  | 2h | 2026-11-02 08:00 | 2026-11-02 10:00 | 28FS+38h | Аналитик |
| 31 | 4.2 | Создание таблиц movies, sessions |  | 6h | 2026-11-02 10:00 | 2026-11-02 17:00 | 30 | PM / Backend |
| 32 | 4.3 | Разработка эндпоинтов GET /movies и GET /sessions |  | 8h | 2026-11-03 08:00 | 2026-11-03 17:00 | 31 | Lead Dev |
| 33 | 4.4 | Вёрстка карточек фильмов и страницы выбора сеанса |  | 10h | 2026-11-02 10:00 | 2026-11-03 12:00 | 30 | Frontend |
| 34 | 4.5 | Подключение API афиши к интерфейсу |  | 6h | 2026-11-05 08:00 | 2026-11-05 15:00 | 32, 33 | Frontend |
| 35 | 4.6 | Написание тест-кейсов на отображение пустого расписания |  | 2h | 2026-11-02 10:00 | 2026-11-02 12:00 | 30 | Аналитик; QA |
| 36 | 4.7 | Проверка вёрстки на разных разрешениях, фикс багов |  | 6h | 2026-11-05 15:00 | 2026-11-06 12:00 | 34, 35 | Frontend; QA |
| 37 | 4.8 | Спринт 2 принят | milestone | 0h | 2026-11-06 12:00 | 2026-11-06 12:00 | 36 |  |
| 38 | 5.0 | **Модуль «Схема зала и бронирование» (Спринт 3)** |  | 5d | 2026-11-16 08:00 | 2026-11-20 17:00 |  |  |
| 39 | 5.1 | Описание логики блокировки мест при одновременном бронировании |  | 4h | 2026-11-16 08:00 | 2026-11-16 12:00 | 37FS+44h | Аналитик |
| 40 | 5.2 | Разработка структуры таблиц halls, seats, bookings |  | 6h | 2026-11-16 13:00 | 2026-11-17 10:00 | 39 | PM / Backend |
| 41 | 5.3 | API POST /bookings с SELECT FOR UPDATE (защита от двойных продаж) |  | 16h | 2026-11-17 10:00 | 2026-11-19 10:00 | 40 | Lead Dev |
| 42 | 5.4 | Вёрстка интерактивной схемы зала (CSS Grid, статусы мест) |  | 14h | 2026-11-16 13:00 | 2026-11-18 10:00 | 39 | Frontend |
| 43 | 5.5 | Интеграция: запрос на бронь и обработка HTTP 409 |  | 8h | 2026-11-19 10:00 | 2026-11-20 10:00 | 41, 42 | Frontend |
| 44 | 5.6 | Скрипт имитации одновременного бронирования (нагрузочный тест) |  | 8h | 2026-11-19 10:00 | 2026-11-20 10:00 | 41 | Аналитик; QA |
| 45 | 5.7 | Прогон сценариев, проверка отката транзакции |  | 6h | 2026-11-20 10:00 | 2026-11-20 17:00 | 43, 44 | Frontend; QA |
| 46 | 5.8 | Спринт 3 принят | milestone | 0h | 2026-11-20 17:00 | 2026-11-20 17:00 | 45 |  |
| 47 | 6.0 | **Спринт 4. Оплата, QR, панель контроллера и финальное тестирование** |  | 6.88d | 2026-11-30 08:00 | 2026-12-08 16:00 |  |  |
| 48 | 6.1 | Сценарий успешной/неуспешной оплаты и формат данных для QR |  | 3h | 2026-11-30 08:00 | 2026-11-30 11:00 | 46FS+40h | Аналитик |
| 49 | 6.2 | Создание таблицы tickets, связь с bookings |  | 4h | 2026-11-30 11:00 | 2026-11-30 16:00 | 48 | PM / Backend |
| 50 | 6.3 | Имитация оплаты, генерация QR (qrcode), API получения QR |  | 12h | 2026-11-30 16:00 | 2026-12-02 11:00 | 49 | Lead Dev |
| 51 | 6.4 | Вёрстка страницы оплаты и личного кабинета с билетами |  | 8h | 2026-11-30 11:00 | 2026-12-01 11:00 | 48 | Frontend |
| 52 | 6.5 | Отрисовка QR-кода на экране телефона (base64 через API) |  | 6h | 2026-12-02 11:00 | 2026-12-03 09:00 | 50, 51 | Frontend |
| 53 | 6.6 | Тестирование сценариев сбоя оплаты |  | 4h | 2026-12-02 11:00 | 2026-12-02 16:00 | 50 | Аналитик; QA |
| 54 | 6.7 | Проверка читаемости QR-кода обычным сканером |  | 4h | 2026-12-03 09:00 | 2026-12-03 14:00 | 52 | Frontend; QA |
| 55 | 6.8 | Требования к интерфейсу контроллера (ввод кода/сканирование) |  | 2h | 2026-11-30 11:00 | 2026-11-30 14:00 | 48 | Аналитик |
| 56 | 6.9 | API валидации билета (действителен/просрочен/подделка) |  | 6h | 2026-12-02 11:00 | 2026-12-03 09:00 | 50, 55 | Lead Dev |
| 57 | 6.10 | Вёрстка страницы контроллера |  | 6h | 2026-12-03 09:00 | 2026-12-03 16:00 | 55, 52 | Frontend |
| 58 | 6.11 | Интеграция страницы контроллера с API валидации |  | 4h | 2026-12-03 16:00 | 2026-12-04 11:00 | 56, 57 | Frontend |
| 59 | 6.12 | Создание базы тестовых QR-кодов |  | 4h | 2026-12-03 09:00 | 2026-12-03 14:00 | 56 | Аналитик; QA |
| 60 | 6.13 | Тестирование проходного режима |  | 4h | 2026-12-04 11:00 | 2026-12-04 16:00 | 58, 59 | Frontend; QA |
| 61 | 6.14 | End-to-End тестирование: от регистрации до прохода по QR |  | 8h | 2026-12-04 16:00 | 2026-12-07 16:00 | 53, 54, 60 | PM / Backend; Lead Dev; Frontend; QA; Аналитик |
| 62 | 6.15 | Регрессионное тестирование |  | 8h | 2026-12-07 16:00 | 2026-12-08 16:00 | 61 | Аналитик; QA |
| 63 | 6.16 | Спринт 4 принят | milestone | 0h | 2026-12-08 16:00 | 2026-12-08 16:00 | 62 |  |

Notes:
- 30: Роль: [Аналитик]. Плановая длительность по WBS: 2 ч.
- 31: Роль: [PM / Backend]. Плановая длительность по WBS: 6 ч.
- 32: Роль: [Lead Dev]. Плановая длительность по WBS: 8 ч.
- 33: Роль: [Frontend]. Плановая длительность по WBS: 10 ч.
- 34: Роль: [Frontend]. Плановая длительность по WBS: 6 ч.
- 35: Роль: [Аналитик / QA]. Плановая длительность по WBS: 2 ч.
- 36: Роль: [Frontend / QA]. Плановая длительность по WBS: 6 ч.
- 39: Роль: [Аналитик]. Плановая длительность по WBS: 4 ч.
- 40: Роль: [PM / Backend]. Плановая длительность по WBS: 6 ч.
- 41: Роль: [Lead Dev]. Плановая длительность по WBS: 16 ч.
- 42: Роль: [Frontend]. Плановая длительность по WBS: 14 ч.
- 43: Роль: [Frontend]. Плановая длительность по WBS: 8 ч.
- 44: Роль: [Аналитик / QA]. Плановая длительность по WBS: 8 ч.
- 45: Роль: [Frontend / QA]. Плановая длительность по WBS: 6 ч.
- 48: Роль: [Аналитик]. Плановая длительность по WBS: 3 ч.
- 49: Роль: [PM / Backend]. Плановая длительность по WBS: 4 ч.
- 50: Роль: [Lead Dev]. Плановая длительность по WBS: 12 ч.
- 51: Роль: [Frontend]. Плановая длительность по WBS: 8 ч.
- 52: Роль: [Frontend]. Плановая длительность по WBS: 6 ч.
- 53: Роль: [Аналитик / QA]. Плановая длительность по WBS: 4 ч.
- 54: Роль: [Frontend / QA]. Плановая длительность по WBS: 4 ч.
- 55: Роль: [Аналитик]. Плановая длительность по WBS: 2 ч.
- 56: Роль: [Lead Dev]. Плановая длительность по WBS: 6 ч.
- 57: Роль: [Frontend]. Плановая длительность по WBS: 6 ч.
- 58: Роль: [Frontend]. Плановая длительность по WBS: 4 ч.
- 59: Роль: [Аналитик / QA]. Плановая длительность по WBS: 4 ч.
- 60: Роль: [Frontend / QA]. Плановая длительность по WBS: 4 ч.
- 61: Роль: [Вся команда]. Плановая длительность по WBS: 8 ч.
- 62: Роль: [Аналитик / QA]. Плановая длительность по WBS: 8 ч.
