# БилетON — онлайн-бронирование билетов в кино

Schedule from MS Project XML, 2026-10-19 to 2026-12-13.
ЛР: WBS и диаграмма Ганта

## Calendars

- Стандартный (с праздником 04.11): Mon-Fri 08:00-12:00, 13:00-17:00; Sat-Sun off. Exceptions (off unless hours are given): 2026-11-04.

## Resources

| Resource | Group |
| --- | --- |
| PM / Backend | Команда БилетON |
| Lead Dev | Команда БилетON |
| Frontend | Команда БилетON |
| QA | Команда БилетON |
| Аналитик | Команда БилетON |

## Schedule

| ID | WBS | Task | Type | Duration | Start | Finish | Predecessors | Total slack | Free slack | Constraint | Deadline | Resources | Work |
| --- | --- | --- | --- | --- | --- | --- | --- | --- | --- | --- | --- | --- | --- |
| 1 | 1.0 | **Управление проектом и документация (командный менеджмент)** |  | 39d | 2026-10-19 08:00 | 2026-12-13 17:00 |  | 0d |  |  |  |  | 67h |
| 2 | 1.1 | Модерация Scrum-событий (планирование спринтов, дейли, ретро) 1 | manual | 2h | 2026-10-19 08:00 | 2026-10-19 10:00 |  |  |  | start no earlier than 2026-10-19 08:00 |  |  |  |
| 3 | 1.2 | Участие в ежедневных летучках и обновление статусов в Trello/Jira 1 | manual | 2h | 2026-10-19 08:00 | 2026-10-19 10:00 |  |  |  | start no earlier than 2026-10-19 08:00 |  |  |  |
| 4 | 1.3 | Ведение реестра рисков и расчёт метрик EVM 1 | manual | 2h | 2026-10-19 08:00 | 2026-10-19 10:00 |  |  |  | start no earlier than 2026-10-19 08:00 |  |  |  |
| 5 | 1.1 | Разработка Устава проекта, согласование со стейкхолдерами |  | 8h | 2026-10-19 08:00 | 2026-10-19 17:00 |  | 2d | 0d |  |  | PM / Backend | 8h |
| 6 | 1.2 | Декомпозиция WBS, построение диаграммы Ганта |  | 4h | 2026-10-20 08:00 | 2026-10-20 12:00 | 5 | 2d | 0d |  |  | PM / Backend; Lead Dev; Frontend; QA; Аналитик | 20h |
| 7 | 1.6 | Финальная ретроспектива (Start-Stop-Continue) |  | 2h | 2026-12-09 08:00 | 2026-12-09 10:00 | 19 | 2.25d | 0.25d |  |  | PM / Backend; Lead Dev; Frontend; QA; Аналитик | 10h |
| 8 | 1.7 | Внедрение и сопровождение User Manual |  | 4h | 2026-12-08 13:00 | 2026-12-08 17:00 | 84 | 2.5d | 0.5d |  |  | PM / Backend | 4h |
| 9 | 1.8 | Сборка портфолио и подготовка презентации к защите |  | 8h | 2026-12-08 13:00 | 2026-12-09 12:00 | 84 | 2d | 0d |  |  | PM / Backend [75%] | 6h |
| 10 | 1.9 | Подготовка к защите, сдача проекта |  | 4h | 2026-12-09 13:00 | 2026-12-09 17:00 | 7, 8, 9 | 2d | 0d |  |  | PM / Backend [75%]; Lead Dev; Frontend; QA; Аналитик | 19h |
| 11 | 1.10 | Защита проекта | milestone | 0h | 2026-12-09 17:00 | 2026-12-09 17:00 | 10 | 2d |  |  | 2026-12-13 17:00 |  |  |
| 12 | 1.11 | Проект завершён (дедлайн 13.12) | milestone | 0h | 2026-12-13 17:00 | 2026-12-13 17:00 | 11 | 0d |  | finish no earlier than 2026-12-13 17:00 |  |  |  |
| 13 | 2.0 | **Организация инфраструктуры разработки (DevOps)** |  | 35d | 2026-10-20 08:00 | 2026-12-08 17:00 |  | 2.25d |  |  |  |  | 24h |
| 14 | 2.1 | Инициализация Git-репозитория, настройка Git-flow (main, dev, feature) |  | 4h | 2026-10-20 08:00 | 2026-10-20 12:00 | 5 | 34.25d | 0d |  |  | PM / Backend | 4h |
| 15 | 2.2 | Разработка инструкции по локальному запуску проекта (README) |  | 4h | 2026-10-20 13:00 | 2026-10-20 17:00 | 14 | 34.25d | 0d |  |  | Lead Dev | 4h |
| 16 | 2.3 | Настройка пайплайна CI (GitHub Actions: линтеры/тесты) |  | 6h | 2026-10-21 08:00 | 2026-10-21 15:00 | 14, 15 | 34.25d | 0d | start no earlier than 2026-10-20 13:00 |  | PM / Backend [66.67%] | 4h |
| 17 | 2.4 | Развёртывание локальной СУБД PostgreSQL для тестов |  | 4h | 2026-10-20 13:00 | 2026-10-20 17:00 | 14 | 35d | 0.75d |  |  | QA [50%] | 2h |
| 18 | 2.5 | Настройка скриптов деплоя на тестовый сервер (VPS) |  | 6h | 2026-10-21 15:00 | 2026-10-22 12:00 | 16, 17 | 34.25d | 32d | start no earlier than 2026-10-21 10:00 |  | Lead Dev | 6h |
| 19 | 2.6 | Деплой финальной версии на сервер |  | 4h | 2026-12-08 13:00 | 2026-12-08 17:00 | 84, 18 | 2.25d | 0d |  |  | Lead Dev | 4h |
| 20 | 3.0 | **Модуль «Авторизация и профиль» (Спринт 1)** |  | 3.75d | 2026-10-20 13:00 | 2026-10-26 10:00 |  | 1.62d |  |  |  |  | 42h |
| 21 | 3.1 | Написание Use Cases и критериев DoD для входа/регистрации |  | 4h | 2026-10-20 13:00 | 2026-10-20 17:00 | 6 | 2d | 0d |  |  | Аналитик; QA [50%] | 6h |
| 22 | 3.2 | Проектирование и создание таблицы users |  | 4h | 2026-10-21 08:00 | 2026-10-21 12:00 | 21 | 2d | 0d |  |  | PM / Backend | 4h |
| 23 | 3.3 | Реализация JWT-авторизации и разграничения ролей |  | 9h | 2026-10-21 13:00 | 2026-10-22 14:00 | 22 | 2d | 0d |  |  | Lead Dev [66.67%] | 6h |
| 24 | 3.4 | Вёрстка страниц входа и регистрации по макету |  | 8h | 2026-10-21 08:00 | 2026-10-21 17:00 | 21 | 2.62d | 0.62d |  |  | Frontend | 8h |
| 25 | 3.5 | Интеграция форм с API авторизации (сохранение токена) |  | 6h | 2026-10-22 14:00 | 2026-10-23 11:00 | 23, 24 | 2d | 0d |  |  | Frontend | 6h |
| 26 | 3.6 | Написание чек-листа тестирования безопасности |  | 2h | 2026-10-21 08:00 | 2026-10-21 10:00 | 21 | 4.12d | 2.12d |  |  | Аналитик; QA | 4h |
| 27 | 3.7 | Прогон тестов, заведение багов в Jira |  | 4h | 2026-10-23 11:00 | 2026-10-23 16:00 | 25, 26 | 2d | 0d |  |  | Frontend; QA | 8h |
| 28 | 3.8 | Спринт 1 принят | milestone | 0h | 2026-10-23 16:00 | 2026-10-23 16:00 | 27 | 2d | 0d |  |  |  |  |
| 29 | 3.9 | Модерация Scrum-событий (планирование спринтов, дейли, ретро) 2 | manual | 2h | 2026-10-26 08:00 | 2026-10-26 10:00 |  |  |  | start no earlier than 2026-10-26 08:00 |  |  |  |
| 30 | 3.10 | Участие в ежедневных летучках и обновление статусов в Trello/Jira 2 | manual | 2h | 2026-10-26 08:00 | 2026-10-26 10:00 |  |  |  | start no earlier than 2026-10-26 08:00 |  |  |  |
| 31 | 3.11 | Ведение реестра рисков и расчёт метрик EVM 2 | manual | 2h | 2026-10-26 08:00 | 2026-10-26 10:00 |  |  |  | start no earlier than 2026-10-26 08:00 |  |  |  |

Notes:
- 5: Роль: [PM]. Плановая длительность по WBS: 8 ч.
- 6: Роль: [Вся команда]. Плановая длительность по WBS: 4 ч.
- 7: Роль: [Вся команда]. Плановая длительность по WBS: 2 ч.
- 8: Роль: [PM]. Плановая длительность по WBS: 4 ч.
- 9: Роль: [PM]. Плановая длительность по WBS: 8 ч.
- 10: Роль: [Вся команда]. Плановая длительность по WBS: 4 ч.
- 14: Роль: [PM / Backend]. Плановая длительность по WBS: 4 ч.
- 15: Роль: [Lead Dev]. Плановая длительность по WBS: 4 ч.
- 16: Роль: [PM / Backend]. Плановая длительность по WBS: 6 ч.
- 17: Роль: [QA]. Плановая длительность по WBS: 4 ч.
- 18: Роль: [Lead Dev]. Плановая длительность по WBS: 6 ч.
- 19: Роль: [Lead Dev]. Плановая длительность по WBS: 4 ч.
- 21: Роль: [Аналитик / QA]. Плановая длительность по WBS: 4 ч.
- 22: Роль: [PM / Backend]. Плановая длительность по WBS: 4 ч.
- 23: Роль: [Lead Dev]. Плановая длительность по WBS: 12 ч.
- 24: Роль: [Frontend]. Плановая длительность по WBS: 8 ч.
- 25: Роль: [Frontend]. Плановая длительность по WBS: 6 ч.
- 26: Роль: [Аналитик / QA]. Плановая длительность по WBS: 2 ч.
- 27: Роль: [Frontend / QA]. Плановая длительность по WBS: 4 ч.

| ID | WBS | Task | Type | Duration | Start | Finish | Predecessors | Total slack | Free slack | Constraint | Resources | Work |
| --- | --- | --- | --- | --- | --- | --- | --- | --- | --- | --- | --- | --- |
| 32 | 4.0 | **Модуль «Афиша и сеансы» (Спринт 2)** |  | 4.62d | 2026-10-30 14:00 | 2026-11-09 10:00 |  | 0.38d |  |  |  | 48h |
| 33 | 4.1 | Формирование User Stories на просмотр афиши и расписания |  | 2h | 2026-10-30 14:00 | 2026-10-30 16:00 | 28FS+38h | 2d | 0d |  | Аналитик | 2h |
| 34 | 4.2 | Создание таблиц movies, sessions |  | 6h | 2026-10-30 16:00 | 2026-11-02 14:00 | 33 | 2d | 0d |  | PM / Backend | 6h |
| 35 | 4.3 | Модерация Scrum-событий (планирование спринтов, дейли, ретро) 3 | manual | 2h | 2026-11-02 08:00 | 2026-11-02 10:00 |  |  |  | start no earlier than 2026-11-02 08:00 |  |  |
| 36 | 4.4 | Участие в ежедневных летучках и обновление статусов в Trello/Jira 3 | manual | 2h | 2026-11-02 08:00 | 2026-11-02 10:00 |  |  |  | start no earlier than 2026-11-02 08:00 |  |  |
| 37 | 4.5 | Ведение реестра рисков и расчёт метрик EVM 3 | manual | 2h | 2026-11-02 08:00 | 2026-11-02 10:00 |  |  |  | start no earlier than 2026-11-02 08:00 |  |  |
| 38 | 4.3 | Разработка эндпоинтов GET /movies и GET /sessions |  | 8h | 2026-11-02 14:00 | 2026-11-03 14:00 | 34 | 2d | 0d |  | Lead Dev | 8h |
| 39 | 4.4 | Вёрстка карточек фильмов и страницы выбора сеанса |  | 10h | 2026-10-30 16:00 | 2026-11-03 09:00 | 33 | 2.5d | 0.5d |  | Frontend | 10h |
| 40 | 4.5 | Подключение API афиши к интерфейсу |  | 6h | 2026-11-03 14:00 | 2026-11-05 11:00 | 38, 39 | 2d | 0d |  | Frontend | 6h |
| 41 | 4.6 | Написание тест-кейсов на отображение пустого расписания |  | 2h | 2026-10-30 16:00 | 2026-11-02 09:00 | 33 | 4.25d | 2.25d |  | Аналитик; QA | 4h |
| 42 | 4.7 | Проверка вёрстки на разных разрешениях, фикс багов |  | 6h | 2026-11-05 11:00 | 2026-11-06 09:00 | 40, 41 | 2d | 0d |  | Frontend; QA | 12h |
| 43 | 4.8 | Спринт 2 принят | milestone | 0h | 2026-11-06 09:00 | 2026-11-06 09:00 | 42 | 2d | 0d |  |  |  |
| 44 | 4.12 | Модерация Scrum-событий (планирование спринтов, дейли, ретро) 4 | manual | 2h | 2026-11-09 08:00 | 2026-11-09 10:00 |  |  |  | start no earlier than 2026-11-09 08:00 |  |  |
| 45 | 4.13 | Участие в ежедневных летучках и обновление статусов в Trello/Jira 4 | manual | 2h | 2026-11-09 08:00 | 2026-11-09 10:00 |  |  |  | start no earlier than 2026-11-09 08:00 |  |  |
| 46 | 4.14 | Ведение реестра рисков и расчёт метрик EVM 4 | manual | 2h | 2026-11-09 08:00 | 2026-11-09 10:00 |  |  |  | start no earlier than 2026-11-09 08:00 |  |  |
| 47 | 5.0 | **Модуль «Схема зала и бронирование» (Спринт 3)** |  | 5.62d | 2026-11-13 14:00 | 2026-11-23 10:00 |  | 0.38d |  |  |  | 76h |
| 48 | 5.1 | Описание логики блокировки мест при одновременном бронировании |  | 4h | 2026-11-13 14:00 | 2026-11-16 09:00 | 43FS+44h | 2d | 0d |  | Аналитик | 4h |
| 49 | 5.2 | Модерация Scrum-событий (планирование спринтов, дейли, ретро) 5 | manual | 2h | 2026-11-16 08:00 | 2026-11-16 10:00 |  |  |  | start no earlier than 2026-11-16 08:00 |  |  |
| 50 | 5.3 | Участие в ежедневных летучках и обновление статусов в Trello/Jira 5 | manual | 2h | 2026-11-16 08:00 | 2026-11-16 10:00 |  |  |  | start no earlier than 2026-11-16 08:00 |  |  |
| 51 | 5.4 | Ведение реестра рисков и расчёт метрик EVM 5 | manual | 2h | 2026-11-16 08:00 | 2026-11-16 10:00 |  |  |  | start no earlier than 2026-11-16 08:00 |  |  |
| 52 | 5.2 | Разработка структуры таблиц halls, seats, bookings |  | 6h | 2026-11-16 09:00 | 2026-11-16 16:00 | 48 | 2d | 0d |  | PM / Backend | 6h |
| 53 | 5.3 | API POST /bookings с SELECT FOR UPDATE (защита от двойных продаж) |  | 16h | 2026-11-16 16:00 | 2026-11-18 16:00 | 52 | 2d | 0d |  | Lead Dev | 16h |
| 54 | 5.4 | Вёрстка интерактивной схемы зала (CSS Grid, статусы мест) |  | 14h | 2026-11-16 09:00 | 2026-11-17 16:00 | 48 | 3d | 1d |  | Frontend | 14h |
| 55 | 5.5 | Интеграция: запрос на бронь и обработка HTTP 409 |  | 8h | 2026-11-18 16:00 | 2026-11-19 16:00 | 53, 54 | 2d | 0d |  | Frontend | 8h |
| 56 | 5.6 | Скрипт имитации одновременного бронирования (нагрузочный тест) |  | 8h | 2026-11-18 16:00 | 2026-11-19 16:00 | 53 | 2d | 0d |  | Аналитик; QA | 16h |
| 57 | 5.7 | Прогон сценариев, проверка отката транзакции |  | 6h | 2026-11-19 16:00 | 2026-11-20 14:00 | 55, 56 | 2d | 0d |  | Frontend; QA | 12h |
| 58 | 5.8 | Спринт 3 принят | milestone | 0h | 2026-11-20 14:00 | 2026-11-20 14:00 | 57 | 2d | 0d |  |  |  |
| 59 | 5.12 | Модерация Scrum-событий (планирование спринтов, дейли, ретро) 6 | manual | 2h | 2026-11-23 08:00 | 2026-11-23 10:00 |  |  |  | start no earlier than 2026-11-23 08:00 |  |  |
| 60 | 5.13 | Участие в ежедневных летучках и обновление статусов в Trello/Jira 6 | manual | 2h | 2026-11-23 08:00 | 2026-11-23 10:00 |  |  |  | start no earlier than 2026-11-23 08:00 |  |  |
| 61 | 5.14 | Ведение реестра рисков и расчёт метрик EVM 6 | manual | 2h | 2026-11-23 08:00 | 2026-11-23 10:00 |  |  |  | start no earlier than 2026-11-23 08:00 |  |  |

Notes:
- 33: Роль: [Аналитик]. Плановая длительность по WBS: 2 ч.
- 34: Роль: [PM / Backend]. Плановая длительность по WBS: 6 ч.
- 38: Роль: [Lead Dev]. Плановая длительность по WBS: 8 ч.
- 39: Роль: [Frontend]. Плановая длительность по WBS: 10 ч.
- 40: Роль: [Frontend]. Плановая длительность по WBS: 6 ч.
- 41: Роль: [Аналитик / QA]. Плановая длительность по WBS: 2 ч.
- 42: Роль: [Frontend / QA]. Плановая длительность по WBS: 6 ч.
- 48: Роль: [Аналитик]. Плановая длительность по WBS: 4 ч.
- 52: Роль: [PM / Backend]. Плановая длительность по WBS: 6 ч.
- 53: Роль: [Lead Dev]. Плановая длительность по WBS: 16 ч.
- 54: Роль: [Frontend]. Плановая длительность по WBS: 14 ч.
- 55: Роль: [Frontend]. Плановая длительность по WBS: 8 ч.
- 56: Роль: [Аналитик / QA]. Плановая длительность по WBS: 8 ч.
- 57: Роль: [Frontend / QA]. Плановая длительность по WBS: 6 ч.

| ID | WBS | Task | Type | Duration | Start | Finish | Predecessors | Total slack | Free slack | Constraint | Resources | Work |
| --- | --- | --- | --- | --- | --- | --- | --- | --- | --- | --- | --- | --- |
| 62 | 6.0 | **Спринт 4. Оплата, QR, панель контроллера и финальное тестирование** |  | 6.88d | 2026-11-27 14:00 | 2026-12-08 12:00 |  | 0.38d |  |  |  | 130h |
| 63 | 6.1 | Сценарий успешной/неуспешной оплаты и формат данных для QR |  | 3h | 2026-11-27 14:00 | 2026-11-27 17:00 | 58FS+40h | 2d | 0d |  | Аналитик | 3h |
| 64 | 6.2 | Модерация Scrum-событий (планирование спринтов, дейли, ретро) 7 | manual | 2h | 2026-11-30 08:00 | 2026-11-30 10:00 |  |  |  | start no earlier than 2026-11-30 08:00 |  |  |
| 65 | 6.3 | Участие в ежедневных летучках и обновление статусов в Trello/Jira 7 | manual | 2h | 2026-11-30 08:00 | 2026-11-30 10:00 |  |  |  | start no earlier than 2026-11-30 08:00 |  |  |
| 66 | 6.4 | Ведение реестра рисков и расчёт метрик EVM 7 | manual | 2h | 2026-11-30 08:00 | 2026-11-30 10:00 |  |  |  | start no earlier than 2026-11-30 08:00 |  |  |
| 67 | 6.2 | Создание таблицы tickets, связь с bookings |  | 4h | 2026-11-30 08:00 | 2026-11-30 12:00 | 63 | 2d | 0d |  | PM / Backend | 4h |
| 68 | 6.3 | Имитация оплаты, генерация QR (qrcode), API получения QR |  | 12h | 2026-11-30 13:00 | 2026-12-01 17:00 | 67 | 2d | 0d |  | Lead Dev | 12h |
| 69 | 6.4 | Вёрстка страницы оплаты и личного кабинета с билетами |  | 8h | 2026-11-30 08:00 | 2026-11-30 17:00 | 63 | 3d | 1d |  | Frontend | 8h |
| 70 | 6.5 | Отрисовка QR-кода на экране телефона (base64 через API) |  | 6h | 2026-12-02 08:00 | 2026-12-02 15:00 | 68, 69 | 2d | 0d |  | Frontend [66.67%] | 4h |
| 71 | 6.6 | Тестирование сценариев сбоя оплаты |  | 4h | 2026-12-02 08:00 | 2026-12-02 12:00 | 68 | 4d | 2d |  | Аналитик; QA | 8h |
| 72 | 6.7 | Проверка читаемости QR-кода обычным сканером |  | 4h | 2026-12-02 15:00 | 2026-12-03 10:00 | 70 | 3.25d | 1.25d |  | Frontend [50%]; QA | 6h |
| 73 | 6.8 | Требования к интерфейсу контроллера (ввод кода/сканирование) |  | 2h | 2026-11-30 08:00 | 2026-11-30 10:00 | 63 | 4.5d | 1.75d |  | Аналитик | 2h |
| 74 | 6.9 | API валидации билета (действителен/просрочен/подделка) |  | 6h | 2026-12-02 08:00 | 2026-12-02 15:00 | 68, 73 | 2.75d | 0d |  | Lead Dev | 6h |
| 75 | 6.10 | Вёрстка страницы контроллера |  | 6h | 2026-12-02 15:00 | 2026-12-03 12:00 | 73, 70 | 2d | 0d |  | Frontend | 6h |
| 76 | 6.11 | Интеграция страницы контроллера с API валидации |  | 4h | 2026-12-03 13:00 | 2026-12-03 17:00 | 74, 75 | 2d | 0d |  | Frontend [75%] | 3h |
| 77 | 6.12 | Создание базы тестовых QR-кодов |  | 4h | 2026-12-02 15:00 | 2026-12-03 10:00 | 74 | 2.75d | 0.75d |  | Аналитик; QA | 8h |
| 78 | 6.13 | Тестирование проходного режима |  | 4h | 2026-12-04 08:00 | 2026-12-04 12:00 | 76, 77 | 2d | 0d |  | Frontend; QA | 8h |
| 79 | 6.14 | End-to-End тестирование: от регистрации до прохода по QR |  | 8h | 2026-12-04 13:00 | 2026-12-07 12:00 | 71, 72, 78 | 2d | 0d |  | PM / Backend [66.67%]; Lead Dev; Frontend; QA; Аналитик | 36h |
| 80 | 6.18 | Модерация Scrum-событий (планирование спринтов, дейли, ретро) 8 | manual | 2h | 2026-12-07 08:00 | 2026-12-07 10:00 |  |  |  | start no earlier than 2026-12-07 08:00 |  |  |
| 81 | 6.19 | Участие в ежедневных летучках и обновление статусов в Trello/Jira 8 | manual | 2h | 2026-12-07 08:00 | 2026-12-07 10:00 |  |  |  | start no earlier than 2026-12-07 08:00 |  |  |
| 82 | 6.20 | Ведение реестра рисков и расчёт метрик EVM 8 | manual | 2h | 2026-12-07 08:00 | 2026-12-07 10:00 |  |  |  | start no earlier than 2026-12-07 08:00 |  |  |
| 83 | 6.15 | Регрессионное тестирование |  | 8h | 2026-12-07 13:00 | 2026-12-08 12:00 | 79 | 2d | 0d |  | Аналитик; QA | 16h |
| 84 | 6.16 | Спринт 4 принят | milestone | 0h | 2026-12-08 12:00 | 2026-12-08 12:00 | 83 | 2d | 0d |  |  |  |

Notes:
- 63: Роль: [Аналитик]. Плановая длительность по WBS: 3 ч.
- 67: Роль: [PM / Backend]. Плановая длительность по WBS: 4 ч.
- 68: Роль: [Lead Dev]. Плановая длительность по WBS: 12 ч.
- 69: Роль: [Frontend]. Плановая длительность по WBS: 8 ч.
- 70: Роль: [Frontend]. Плановая длительность по WBS: 6 ч.
- 71: Роль: [Аналитик / QA]. Плановая длительность по WBS: 4 ч.
- 72: Роль: [Frontend / QA]. Плановая длительность по WBS: 4 ч.
- 73: Роль: [Аналитик]. Плановая длительность по WBS: 2 ч.
- 74: Роль: [Lead Dev]. Плановая длительность по WBS: 6 ч.
- 75: Роль: [Frontend]. Плановая длительность по WBS: 6 ч.
- 76: Роль: [Frontend]. Плановая длительность по WBS: 4 ч.
- 77: Роль: [Аналитик / QA]. Плановая длительность по WBS: 4 ч.
- 78: Роль: [Frontend / QA]. Плановая длительность по WBS: 4 ч.
- 79: Роль: [Вся команда]. Плановая длительность по WBS: 8 ч.
- 83: Роль: [Аналитик / QA]. Плановая длительность по WBS: 8 ч.
