# План проекта «БилетON» (19.10.2026 — 13.12.2026)

Schedule from MS Project XML, 2026-10-19 to 2026-12-13, 5 hours a day.
Лабораторная работа №6. Планирование расписания проекта
Команда «БилетON»

## Calendars

- Стандартный (5-дневка, 5 ч/день): Mon-Fri 09:00-14:00; Sat-Sun off. Exceptions (off unless hours are given): 2026-11-04 to 2026-11-05 (День народного единства).

## Schedule

| ID | WBS | Task | Duration | Start | Finish | Predecessors | Total slack | Free slack | Work |
| --- | --- | --- | --- | --- | --- | --- | --- | --- | --- |
| 1 | 1.0 | **1.0 Управление проектом и документация** | 38d | 2026-10-19 | 2026-12-10 |  |  |  |  |
| 2 | 1.1 | 1.1 Устав проекта | 2d | 2026-10-19 | 2026-10-20 |  | 0d |  | 10h |
| 3 | 1.2 | 1.2 WBS и диаграмма Ганта | 1d | 2026-10-21 | 2026-10-21 | 2 | 0d |  | 5h |
| 4 | 1.6 | 1.6 Финальная ретроспектива | 1d | 2026-12-07 | 2026-12-07 | 54 | 0.1d |  | 5h |
| 5 | 1.7 | 1.7 User Manual | 1d | 2026-12-07 | 2026-12-07 | 54 | 0d |  | 5h |
| 6 | 1.8 | 1.8 Портфолио и презентация | 2d | 2026-12-09 | 2026-12-10 | 4, 7 | 0d |  | 10h |
| 7 | 1.9 | 1.9 Подготовка к защите | 1d | 2026-12-08 | 2026-12-08 | 14, 5 | 0d |  | 5h |
| 8 | 2.0 | **2.0 Организация инфраструктуры (DevOps)** | 33d | 2026-10-21 | 2026-12-07 |  |  |  |  |
| 9 | 2.1 | 2.1 Git-flow | 1d | 2026-10-21 | 2026-10-21 | 2 | 0d |  | 5h |
| 10 | 2.2 | 2.2 Инструкция запуска | 1d | 2026-10-22 | 2026-10-22 | 9 | 3.4d |  | 5h |
| 11 | 2.3 | 2.3 CI | 1d | 2026-10-22 | 2026-10-22 | 9 | 3.3d | 0d | 5h |
| 12 | 2.4 | 2.4 PostgreSQL | 1d | 2026-10-22 | 2026-10-22 | 9 | 0d |  | 5h |
| 13 | 2.5 | 2.5 Деплой на VPS | 1d | 2026-10-23 | 2026-10-23 | 11, 12 | 3.3d |  | 5h |
| 14 | 2.6 | 2.6 Финальный деплой | 1d | 2026-12-07 | 2026-12-07 | 54 | 0d |  | 5h |
| 15 | 3.0 | **3.0 Модуль «Авторизация и профиль» (спринт 1)** | 6d | 2026-10-22 | 2026-10-29 |  |  |  |  |
| 16 | 3.1 | 3.1 Use Cases | 1d | 2026-10-22 | 2026-10-22 | 3 | 0d |  | 5h |
| 17 | 3.2 | 3.2 Таблица users | 1d | 2026-10-23 | 2026-10-23 | 16, 12 | 0d |  | 5h |
| 18 | 3.3 | 3.3 JWT и роли | 2d | 2026-10-26 | 2026-10-27 | 17 | 0d |  | 10h |
| 19 | 3.4 | 3.4 Верстка форм | 2d | 2026-10-23 | 2026-10-26 | 16 | 0.1d |  | 10h |
| 20 | 3.5 | 3.5 Интеграция форм | 1d | 2026-10-28 | 2026-10-28 | 18, 19 | 0d |  | 5h |
| 21 | 3.6 | 3.6 Чек-лист безопасности | 1d | 2026-10-23 | 2026-10-23 | 16 | 0.3d |  | 5h |
| 22 | 3.7 | 3.7 Тесты спринта 1 | 1d | 2026-10-29 | 2026-10-29 | 20, 21 | 0d |  | 5h |
| 23 | 4.0 | **4.0 Модуль «Афиша и сеансы» (спринт 2)** | 6d | 2026-10-30 | 2026-11-09 |  |  |  |  |
| 24 | 4.1 | 4.1 User Stories афиши | 1d | 2026-10-30 | 2026-10-30 | 22 | 0d |  | 5h |
| 25 | 4.2 | 4.2 Таблицы movies и sessions | 1d | 2026-11-02 | 2026-11-02 | 24 | 0d |  | 5h |
| 26 | 4.3 | 4.3 API афиши | 2d | 2026-11-03 | 2026-11-05 | 25 | 0d |  | 10h |
| 27 | 4.4 | 4.4 Карточки и выбор сеанса | 2d | 2026-11-02 | 2026-11-03 | 24 | 0.1d |  | 10h |
| 28 | 4.5 | 4.5 Интеграция афиши | 1d | 2026-11-06 | 2026-11-06 | 26, 27 | 0d |  | 5h |
| 29 | 4.6 | 4.6 Тест-кейсы расписания | 1d | 2026-11-02 | 2026-11-02 | 24 | 0.3d |  | 5h |
| 30 | 4.7 | 4.7 QA спринта 2 | 1d | 2026-11-09 | 2026-11-09 | 28, 29 | 0d |  | 5h |

Notes:
- 1: Суммарная задача блока WBS 1.0. Длительность определяется входящими работами.
- 2: Роль: PM. Трудоёмкость: 8 ч. Разработка Устава проекта, согласование со стейкхолдерами.
- 3: Роль: Вся команда. Трудоёмкость: 4 ч. Декомпозиция WBS, построение диаграммы Ганта.
- 4: Роль: Вся команда. Трудоёмкость: 2 ч. Финальная ретроспектива (Start-Stop-Continue).
- 5: Роль: PM. Трудоёмкость: 4 ч. Внедрение и сопровождение User Manual (инструкции для пользователя и контроллера).
- 6: Роль: PM. Трудоёмкость: 8 ч. Сборка портфолио и подготовка презентации к защите.
- 7: Роль: Вся команда. Трудоёмкость: 4 ч. Подготовка к защите, сдача проекта 13 декабря.
- 8: Суммарная задача блока WBS 2.0. Длительность определяется входящими работами.
- 9: Роль: PM/Backend. Трудоёмкость: 4 ч. Инициализация Git-репозитория, настройка Git-flow (main, dev, feature).
- 10: Роль: Lead Dev. Трудоёмкость: 4 ч. Разработка инструкции по локальному запуску проекта (readme).
- 11: Роль: PM/Backend. Трудоёмкость: 6 ч. Настройка пайплайна CI (GitHub Actions для автозапуска линтеров и тестов).
- 12: Роль: QA. Трудоёмкость: 4 ч. Развертывание локальной СУБД PostgreSQL для тестов.
- 13: Роль: Lead Dev. Трудоёмкость: 6 ч. Настройка скриптов деплоя на тестовый сервер (VPS).
- 14: Роль: Lead Dev. Трудоёмкость: 4 ч. Деплой финальной версии на сервер.
- 15: Суммарная задача блока WBS 3.0. Длительность определяется входящими работами.
- 16: Роль: Аналитик/QA. Трудоёмкость: 4 ч. Написание Use Cases и критериев DoD для входа/регистрации.
- 17: Роль: PM/Backend. Трудоёмкость: 4 ч. Проектирование и создание таблицы users.
- 18: Роль: Lead Dev. Трудоёмкость: 12 ч. Реализация JWT-авторизации и разграничения ролей (зритель/контроллер).
- 19: Роль: Frontend. Трудоёмкость: 8 ч. Верстка страниц входа и регистрации по макету.
- 20: Роль: Frontend. Трудоёмкость: 6 ч. Интеграция форм с API авторизации (сохранение токена).
- 21: Роль: Аналитик/QA. Трудоёмкость: 2 ч. Написание чек-листа тестирования безопасности.
- 22: Роль: Frontend/QA. Трудоёмкость: 4 ч. Прогон тестов, заведение багов в Jira.
- 23: Суммарная задача блока WBS 4.0. Длительность определяется входящими работами.
- 24: Роль: Аналитик. Трудоёмкость: 2 ч. Формирование User Stories на просмотр афиши и расписания.
- 25: Роль: PM/Backend. Трудоёмкость: 6 ч. Создание таблиц movies, sessions.
- 26: Роль: Lead Dev. Трудоёмкость: 8 ч. Разработка эндпоинтов GET /movies и GET /sessions.
- 27: Роль: Frontend. Трудоёмкость: 10 ч. Верстка карточек фильмов и страницы выбора сеанса.
- 28: Роль: Frontend. Трудоёмкость: 6 ч. Подключение API афиши к интерфейсу.
- 29: Роль: Аналитик/QA. Трудоёмкость: 2 ч. Написание тест-кейсов на отображение пустого расписания.
- 30: Роль: Frontend/QA. Трудоёмкость: 6 ч. Проверка верстки на разных разрешениях, фикс багов.

| ID | WBS | Task | Type | Duration | Start | Finish | Predecessors | Total slack | Free slack | Constraint | Work |
| --- | --- | --- | --- | --- | --- | --- | --- | --- | --- | --- | --- |
| 31 | 5.0 | **5.0 Модуль «Схема зала и бронирование» (спринт 3)** |  | 8d | 2026-11-10 | 2026-11-19 |  |  |  |  |  |
| 32 | 5.1 | 5.1 Логика блокировки |  | 1d | 2026-11-10 | 2026-11-10 | 30 | 0d |  |  | 5h |
| 33 | 5.2 | 5.2 Таблицы зала |  | 1d | 2026-11-11 | 2026-11-11 | 32 | 0d |  |  | 5h |
| 34 | 5.3 | 5.3 API бронирования |  | 3d | 2026-11-12 | 2026-11-16 | 33 | 0d |  |  | 15h |
| 35 | 5.4 | 5.4 Схема зала |  | 3d | 2026-11-11 | 2026-11-13 | 32 | 0.1d |  |  | 15h |
| 36 | 5.5 | 5.5 Интеграция брони |  | 2d | 2026-11-17 | 2026-11-18 | 34, 35 | 0d |  |  | 10h |
| 37 | 5.6 | 5.6 Нагрузочный тест |  | 2d | 2026-11-17 | 2026-11-18 | 34 | 0d |  |  | 10h |
| 38 | 5.7 | 5.7 QA спринта 3 |  | 1d | 2026-11-19 | 2026-11-19 | 36, 37 | 0d |  |  | 5h |
| 39 | 6.0 | **6.0 Спринт 4: оплата, QR, панель контроллера, финальное тестирование** |  | 11d | 2026-11-20 | 2026-12-04 |  |  |  |  |  |
| 40 | 6.1 | 6.1 Сценарий оплаты |  | 1d | 2026-11-20 | 2026-11-20 | 38 | 0d |  |  | 5h |
| 41 | 6.2 | 6.2 Таблица tickets |  | 1d | 2026-11-23 | 2026-11-23 | 40 | 0d |  |  | 5h |
| 42 | 6.3 | 6.3 Оплата и QR API |  | 2d | 2026-11-24 | 2026-11-25 | 41 | 0d |  |  | 10h |
| 43 | 6.4 | 6.4 Оплата и личный кабинет |  | 2d | 2026-11-23 | 2026-11-24 | 40 | 0.2d | 0.1d |  | 10h |
| 44 | 6.5 | 6.5 QR на экране |  | 1d | 2026-11-26 | 2026-11-26 | 42, 43 | 0.1d | 0d |  | 5h |
| 45 | 6.6 | 6.6 Тесты сбоев оплаты |  | 1d | 2026-11-26 | 2026-11-26 | 42 | 0.2d |  |  | 5h |
| 46 | 6.7 | 6.7 Проверка QR сканером |  | 1d | 2026-11-27 | 2026-11-27 | 44 | 0.1d |  |  | 5h |
| 47 | 6.8 | 6.8 Требования контроллера |  | 1d | 2026-11-23 | 2026-11-23 | 40 | 0.2d | 0d |  | 5h |
| 48 | 6.9 | 6.9 API валидации |  | 1d | 2026-11-26 | 2026-11-26 | 47, 42 | 0d |  |  | 5h |
| 49 | 6.10 | 6.10 Верстка контроллера |  | 1d | 2026-11-24 | 2026-11-24 | 47 | 0.2d |  |  | 5h |
| 50 | 6.11 | 6.11 Интеграция контроллера |  | 1d | 2026-11-27 | 2026-11-27 | 48, 49 | 0d |  |  | 5h |
| 51 | 6.12 | 6.12 База тестовых QR |  | 1d | 2026-11-26 | 2026-11-26 | 42 | 0.1d |  |  | 5h |
| 52 | 6.13 | 6.13 Тест проходного режима |  | 1d | 2026-11-30 | 2026-11-30 | 50, 51 | 0d |  |  | 5h |
| 53 | 6.14 | 6.14 E2E-тестирование |  | 2d | 2026-12-01 | 2026-12-02 | 45, 46, 52 | 0d |  |  | 10h |
| 54 | 6.15 | 6.15 Регрессионное тестирование |  | 2d | 2026-12-03 | 2026-12-04 | 53 | 0d |  |  | 10h |
| 55 | 7 | Спринт 1 принят | milestone | 0d | 2026-10-29 | 2026-10-29 | 22 |  |  |  |  |
| 56 | 8 | Спринт 2 принят | milestone | 0d | 2026-11-09 | 2026-11-09 | 30 |  |  |  |  |
| 57 | 9 | Спринт 3 принят | milestone | 0d | 2026-11-19 | 2026-11-19 | 38 |  |  |  |  |
| 58 | 10 | Спринт 4 принят | milestone | 0d | 2026-11-30 | 2026-11-30 | 52 |  |  |  |  |
| 59 | 11 | Релиз MVP | milestone | 0d | 2026-12-10 | 2026-12-10 | 6 |  |  |  |  |
| 60 | 12 | Дедлайн сдачи проекта 13.12.2026 | milestone | 0d | 2026-12-13 | 2026-12-13 |  |  |  | start no earlier than 2026-12-13 |  |

Notes:
- 31: Суммарная задача блока WBS 5.0. Длительность определяется входящими работами.
- 32: Роль: Аналитик. Трудоёмкость: 4 ч. Описание логики блокировки мест при одновременном бронировании.
- 33: Роль: PM/Backend. Трудоёмкость: 6 ч. Разработка структуры таблиц halls, seats, bookings.
- 34: Роль: Lead Dev. Трудоёмкость: 16 ч. Реализация API POST /bookings с SELECT FOR UPDATE.
- 35: Роль: Frontend. Трудоёмкость: 14 ч. Верстка интерактивной схемы зала (CSS Grid, статусы мест).
- 36: Роль: Frontend. Трудоёмкость: 8 ч. Отправка запроса на бронь и обработка ошибки HTTP 409.
- 37: Роль: Аналитик/QA. Трудоёмкость: 8 ч. Скрипт имитации одновременного бронирования (нагрузочный тест).
- 38: Роль: Frontend/QA. Трудоёмкость: 6 ч. Прогон сценариев, проверка отката транзакции.
- 39: Суммарная задача блока WBS 6.0. Длительность определяется входящими работами.
- 40: Роль: Аналитик. Трудоёмкость: 3 ч. Сценарий успешной/неуспешной оплаты и формат данных для QR.
- 41: Роль: PM/Backend. Трудоёмкость: 4 ч. Создание таблицы tickets, связь с bookings.
- 42: Роль: Lead Dev. Трудоёмкость: 12 ч. Имитация оплаты, подключение qrcode, API для получения QR.
- 43: Роль: Frontend. Трудоёмкость: 8 ч. Верстка страницы оплаты и личного кабинета с билетами.
- 44: Роль: Frontend. Трудоёмкость: 6 ч. Отрисовка QR-кода на экране телефона (base64 через API).
- 45: Роль: Аналитик/QA. Трудоёмкость: 4 ч. Тестирование сценариев сбоя оплаты (отклонение транзакции).
- 46: Роль: Frontend/QA. Трудоёмкость: 4 ч. Проверка читаемости сгенерированного QR-кода обычным сканером.
- 47: Роль: Аналитик. Трудоёмкость: 2 ч. Требования к интерфейсу контроллера (ввод кода/сканирование).
- 48: Роль: Lead Dev. Трудоёмкость: 6 ч. API валидации билета (действителен/просрочен/подделка).
- 49: Роль: Frontend. Трудоёмкость: 6 ч. Верстка страницы контроллера (поле ввода, результат проверки).
- 50: Роль: Frontend. Трудоёмкость: 4 ч. Интеграция страницы с API валидации.
- 51: Роль: Аналитик/QA. Трудоёмкость: 4 ч. Создание базы тестовых QR-кодов (валидные, фейковые, использованные).
- 52: Роль: Frontend/QA. Трудоёмкость: 4 ч. Тестирование проходного режима.
- 53: Роль: Вся команда. Трудоёмкость: 8 ч. End-to-End тестирование: от регистрации до прохода по QR-коду.
- 54: Роль: Аналитик/QA. Трудоёмкость: 8 ч. Регрессионное тестирование (проверка, что новые фичи не сломали старые).
